# Signage

Schedule from MS Project, 2017-03-13 to 2017-06-06.

## Calendars

- Standard: Mon-Fri 08:00-12:00, 13:00-17:00; Sat-Sun off.

## Resources

| Resource |
| --- |
| Dev |
| PM |

## Schedule

| ID | WBS | Task | Duration | Start | Finish | Predecessors | Total slack | Resources | Work |
| --- | --- | --- | --- | --- | --- | --- | --- | --- | --- |
| 1 | 1 | **Production Dashboard for Digital Signage** | 62d | 2017-03-13 | 2017-06-06 |  | 0d |  | 496h |
| 2 | 1.1 | **Design** | 4d | 2017-03-13 | 2017-03-16 |  | 0d |  | 32h |
| 3 | 1.1.1 | Architecture Design | 2d | 2017-03-13 | 2017-03-14 |  | 0d | Dev | 16h |
| 4 | 1.1.2 | UI Design | 2d | 2017-03-15 | 2017-03-16 | 3 | 0d | Dev | 16h |
| 5 | 1.2 | **Development** | 53d | 2017-03-17 | 2017-05-30 | 2 | 0d |  | 424h |
| 6 | 1.2.1 | System Core | 3d | 2017-03-17 | 2017-03-21 |  | 0d | Dev | 24h |
| 7 | 1.2.2 | Setup Unit Testing | 3d | 2017-03-22 | 2017-03-24 | 6 | 0d | Dev | 24h |
| 8 | 1.2.3 | **Systems Integration** | 13d | 2017-03-27 | 2017-04-12 | 7, 6 | 0d |  | 104h |
| 9 | 1.2.3.1 | Define data sets per System | 1d | 2017-03-27 | 2017-03-27 |  | 0d | Dev | 8h |
| 10 | 1.2.3.2 | **Dashboard** | 2d | 2017-03-28 | 2017-03-29 | 9 | 0d |  | 16h |
| 11 | 1.2.3.2.1 | Database connection | 2d | 2017-03-28 | 2017-03-29 |  | 0d | Dev | 16h |
| 12 | 1.2.3.3 | **Jenkins** | 5d | 2017-03-30 | 2017-04-05 | 10 | 0d |  | 40h |
| 13 | 1.2.3.3.1 | Research API | 2d | 2017-03-30 | 2017-03-31 |  | 0d | Dev | 16h |
| 14 | 1.2.3.3.2 | Authentication | 2d | 2017-04-03 | 2017-04-04 | 13 | 0d | Dev | 16h |
| 15 | 1.2.3.3.3 | Query Information | 1d | 2017-04-05 | 2017-04-05 | 14 | 0d | Dev | 8h |
| 16 | 1.2.3.4 | **Sonar** | 5d | 2017-04-06 | 2017-04-12 | 12 | 0d |  | 40h |
| 17 | 1.2.3.4.1 | Research API | 2d | 2017-04-06 | 2017-04-07 |  | 0d | Dev | 16h |
| 18 | 1.2.3.4.2 | Authentication | 2d | 2017-04-10 | 2017-04-11 | 17 | 0d | Dev | 16h |
| 19 | 1.2.3.4.3 | Query Information | 1d | 2017-04-12 | 2017-04-12 | 18 | 0d | Dev | 8h |
| 20 | 1.2.4 | **Projects Overview** | 10d | 2017-04-13 | 2017-04-26 | 8 | 0d |  | 80h |
| 21 | 1.2.4.1 | Build Base/Mock UI | 4d | 2017-04-13 | 2017-04-18 |  | 0d | Dev | 32h |
| 22 | 1.2.4.2 | Populate Projects List | 3d | 2017-04-19 | 2017-04-21 | 21 | 0d | Dev | 24h |
| 23 | 1.2.4.3 | Populate Project Status | 3d | 2017-04-24 | 2017-04-26 | 22 | 0d | Dev | 24h |
| 24 | 1.2.5 | **Project/Team Detail View** | 14d | 2017-04-27 | 2017-05-16 | 20 | 0d |  | 112h |
| 25 | 1.2.5.1 | Build Base/Mock UI | 4d | 2017-04-27 | 2017-05-02 |  | 0d | Dev | 32h |
| 26 | 1.2.5.2 | Project Description | 3d | 2017-05-03 | 2017-05-05 | 25 | 0d | Dev | 24h |
| 27 | 1.2.5.3 | Project Team | 4d | 2017-05-08 | 2017-05-11 | 26 | 0d | Dev | 32h |
| 28 | 1.2.5.4 | Project Status | 3d | 2017-05-12 | 2017-05-16 | 27 | 0d | Dev | 24h |

| ID | WBS | Task | Duration | Start | Finish | Predecessors | Total slack | Resources | Work |
| --- | --- | --- | --- | --- | --- | --- | --- | --- | --- |
| 29 | 1.2.6 | **Admin** | 10d | 2017-05-17 | 2017-05-30 | 24 | 0d |  | 80h |
| 30 | 1.2.6.1 | Build Base/Mock UI | 2d | 2017-05-17 | 2017-05-18 |  | 0d | Dev | 16h |
| 31 | 1.2.6.2 | **System Configuration CRUD** | 3d | 2017-05-19 | 2017-05-23 | 30 | 0d |  | 24h |
| 32 | 1.2.6.2.1 | Dashboard integration info | 1d | 2017-05-19 | 2017-05-19 |  | 0d | Dev | 8h |
| 33 | 1.2.6.2.2 | Jenkins Integration info | 1d | 2017-05-22 | 2017-05-22 | 32 | 0d | Dev | 8h |
| 34 | 1.2.6.2.3 | Sonar Integration info | 1d | 2017-05-23 | 2017-05-23 | 33 | 0d | Dev | 8h |
| 35 | 1.2.6.3 | **Projects List** | 3d | 2017-05-24 | 2017-05-26 | 31 | 0d |  | 24h |
| 36 | 1.2.6.3.1 | Enable/Disable Project | 3d | 2017-05-24 | 2017-05-26 |  | 0d | Dev | 24h |
| 37 | 1.2.6.4 | Rotation Configuration | 2d | 2017-05-29 | 2017-05-30 | 36 | 0d | Dev | 16h |
| 38 | 1.3 | QA | 5d | 2017-05-31 | 2017-06-06 | 5 | 0d | Dev | 40h |
